# planificacion_proyecto

Schedule from MS Project, 2026-03-09 to 2026-10-16.

## Calendars

- Estándar: Mon-Fri 09:00-13:00, 15:00-19:00; Sat-Sun off.

## Resources

| Resource |
| --- |
| Jefe de proyecto |
| Coordinador del servicio |
| Consultor de tecnología |
| Arquitecto de software |
| Analista funcional |
| Analista técnico |
| Dev. Senior backend |
| Dev. Senior fullstack |
| Dev. Senior móvil |
| Dev. Junior |
| Técnico QA |
| Técnico DevOps |
| Técnico Seguridad |
| Formador |

## Schedule

| ID | WBS | Task | Duration | Start | Finish | Predecessors | Total slack | Free slack | Resources | Work |
| --- | --- | --- | --- | --- | --- | --- | --- | --- | --- | --- |
| 1 | 1 | **Desarrollo del proyecto de Sistema de Gestión de Inspecciones** | 159.55d? | 2026-03-09 | 2026-10-16 |  | 0d |  |  | 2003.9h |
| 2 | 1.1 | **Inicio del proyecto** | 10d | 2026-03-09 | 2026-03-20 |  | 0.2d |  |  | 55h |
| 3 | 1.1.1 | Definición formal de responsables | 1d | 2026-03-09 | 2026-03-09 |  | 0.2d | 0d | Jefe de proyecto; Coordinador del servicio | 4h |
| 4 | 1.1.2 | **Planificación definitiva del proyecto** | 2d | 2026-03-10 | 2026-03-11 | 3 | 0.2d |  |  | 20h |
| 5 | 1.1.2.1 | Elaboración de la planificación | 1d | 2026-03-10 | 2026-03-10 | 3 | 0.2d | 0d | Jefe de proyecto; Coordinador del servicio | 14h |
| 6 | 1.1.2.2 | Revisión y aceptación de la planificación por el contratante | 1d | 2026-03-11 | 2026-03-11 | 5 | 0.2d | 0d | Jefe de proyecto; Coordinador del servicio | 6h |
| 7 | 1.1.3 | **Arranque del proyecto** | 3d | 2026-03-12 | 2026-03-16 | 6 | 0.2d |  |  | 15h |
| 8 | 1.1.3.1 | Reunión inicial de arranque | 1d | 2026-03-12 | 2026-03-12 | 6 | 0.2d | 0d | Jefe de proyecto; Coordinador del servicio; Analista funcional; Arquitecto de software; Consultor de tecnología | 4h |
| 9 | 1.1.3.2 | Elaboración del acta de arranque del proyecto | 1d | 2026-03-13 | 2026-03-13 | 8 | 0.2d | 0d | Coordinador del servicio | 3h |
| 10 | 1.1.3.3 | Elaboración del Plan de Proyecto | 1d | 2026-03-16 | 2026-03-16 | 9 | 0.2d | 0d | Coordinador del servicio; Jefe de proyecto | 8h |
| 11 | 1.1.4 | **Configuración del entorno de gestión** | 4d | 2026-03-17 | 2026-03-20 | 10 | 0.2d |  |  | 16h |
| 12 | 1.1.4.1 | Creación de respositorio de código fuente (Git) | 1d | 2026-03-17 | 2026-03-17 | 10 | 0.2d | 0d | Técnico DevOps | 4h |
| 13 | 1.1.4.2 | Configuración del sistema de gestión documental | 1d | 2026-03-18 | 2026-03-18 | 12 | 0.2d | 0d | Coordinador del servicio | 4h |
| 14 | 1.1.4.3 | Configuración de herramienta de gestión de proyectos | 1d | 2026-03-19 | 2026-03-19 | 13 | 0.2d | 0d | Coordinador del servicio | 4h |
| 15 | 1.1.4.4 | Establecimiento del plan de comunicaciones y protocolo de actas | 1d | 2026-03-20 | 2026-03-20 | 14 | 0.2d | 0d | Coordinador del servicio; Jefe de proyecto | 4h |
| 16 | 1.2 | **Elaboración** | 23.2d? | 2026-03-23 | 2026-04-23 |  | 0d |  |  | 230h |
| 17 | 1.2.1 | **Análisis y especificación de requisitos** | 9d | 2026-03-23 | 2026-04-02 | 15 | 0.2d |  |  | 88h |
| 18 | 1.2.1.1 | **Análisis de la situación actual** | 2d | 2026-03-23 | 2026-03-24 | 15 | 0.2d | 0d |  | 22h |
| 19 | 1.2.1.1.1 | Revisión de documentación legacy | 1d | 2026-03-23 | 2026-03-23 | 15 | 0.2d | 0d | Consultor de tecnología; Analista funcional | 8h |
| 20 | 1.2.1.1.2 | Análisis infraestructura y sistema legacy | 1d | 2026-03-24 | 2026-03-24 | 19 | 0.2d |  | Consultor de tecnología; Arquitecto de software | 8h |
| 21 | 1.2.1.1.3 | Entrevistas con usuarios y stakeholders clave | 1d | 2026-03-24 | 2026-03-24 | 19 | 0.2d |  | Consultor de tecnología; Analista funcional | 6h |
| 22 | 1.2.1.2 | **Especificación de requisitos (SRS)** | 5d | 2026-03-25 | 2026-03-31 | 18 | 0.2d |  |  | 32h |
| 23 | 1.2.1.2.1 | Requisitos funcionales | 1d | 2026-03-25 | 2026-03-25 | 18 | 0.2d | 0d | Analista funcional | 8h |
| 24 | 1.2.1.2.2 | Requisitos no funcionales | 1d | 2026-03-26 | 2026-03-26 | 23 | 0.2d | 0d | Analista funcional; Arquitecto de software | 6h |
| 25 | 1.2.1.2.3 | Requisitos de integración | 1d | 2026-03-27 | 2026-03-27 | 24 | 0.2d | 0d | Analista funcional; Consultor de tecnología | 6h |
| 26 | 1.2.1.2.4 | Requisitos de seguridad y cumplimiento normativo | 1d | 2026-03-30 | 2026-03-30 | 25 | 0.2d | 0d | Analista funcional; Técnico Seguridad | 6h |
| 27 | 1.2.1.2.5 | Revisión y validación del SRS | 1d | 2026-03-31 | 2026-03-31 | 24, 25, 26 | 0.2d | 0d | Jefe de proyecto; Coordinador del servicio; Analista técnico | 6h |

| ID | WBS | Task | Duration | Start | Finish | Predecessors | Total slack | Free slack | Resources | Work |
| --- | --- | --- | --- | --- | --- | --- | --- | --- | --- | --- |
| 28 | 1.2.1.3 | **Definición de casos de uso** | 2d | 2026-04-01 | 2026-04-02 | 27 | 0.2d |  |  | 16h |
| 29 | 1.2.1.3.1 | Identificación de actores del sistema | 1d | 2026-04-01 | 2026-04-01 | 27 | 0.2d | 0d | Analista funcional | 4h |
| 30 | 1.2.1.3.2 | Especificación de casos de uso principales | 1d | 2026-04-02 | 2026-04-02 | 29 | 0.2d |  | Analista funcional; Analista técnico | 12h |
| 31 | 1.2.1.4 | **Análisis de riesgos inicial** | 3d | 2026-03-25 | 2026-03-27 | 18 | 4.2d |  |  | 18h |
| 32 | 1.2.1.4.1 | Identificación de riesgos del proyecto | 1d | 2026-03-25 | 2026-03-25 | 18 | 4.2d | 0d | Consultor de tecnología; Jefe de proyecto | 6h |
| 33 | 1.2.1.4.2 | Análisis de riesgos cualitativo y cuantitativo | 1d | 2026-03-26 | 2026-03-26 | 32 | 4.2d | 0d | Consultor de tecnología; Jefe de proyecto | 6h |
| 34 | 1.2.1.4.3 | Definición de planes de respuesta y contigencia | 1d | 2026-03-27 | 2026-03-27 | 33 | 4.2d |  | Consultor de tecnología; Jefe de proyecto | 6h |
| 35 | 1.2.2 | **Diseño, arquitectura y solución técnica** | 14d? | 2026-04-03 | 2026-04-23 | 28, 31 | 0d |  |  | 142h |
| 36 | 1.2.2.1 | **Diseño de la arquitectura** | 6d | 2026-04-03 | 2026-04-13 | 27 | 0d |  |  | 40h |
| 37 | 1.2.2.1.1 | Definición de la arquitectura de microservicios | 1d | 2026-04-03 | 2026-04-06 | 27 | 0d |  | Arquitecto de software | 10h |
| 38 | 1.2.2.1.2 | Diseño de la API Gateway / Router | 1d | 2026-04-06 | 2026-04-07 | 37 | 0d |  | Arquitecto de software; Analista funcional | 6h |
| 39 | 1.2.2.1.3 | Diseño de la API de gestión de inspecciones | 1d | 2026-04-07 | 2026-04-08 | 38 | 0d |  | Analista funcional; Arquitecto de software | 8h |
| 40 | 1.2.2.1.4 | Diseño de la API de móvil | 1d | 2026-04-08 | 2026-04-09 | 39 | 0d |  | Analista funcional; Arquitecto de software | 6h |
| 41 | 1.2.2.1.5 | Diseño del módulo de adjuntos | 1d | 2026-04-09 | 2026-04-10 | 40 | 0d |  | Arquitecto de software; Técnico DevOps | 4h |
| 42 | 1.2.2.1.6 | Diseño del módulo de auditoría y trazabilidad | 1d | 2026-04-10 | 2026-04-13 | 41 | 0d |  | Analista funcional; Arquitecto de software | 6h |
| 43 | 1.2.2.2 | **Diseño del modelo de datos** | 3d? | 2026-04-13 | 2026-04-16 | 36 | 0d |  |  | 20h |
| 44 | 1.2.2.2.1 | Diseño del modelo de datos documental para inspecciones | 1d | 2026-04-13 | 2026-04-14 | 37 | 0d |  | Analista técnico | 8h |
| 45 | 1.2.2.2.2 | Diseño del modelo de datos para auditoría / logs | 1d? | 2026-04-14 | 2026-04-15 | 44 | 0d |  | Analista técnico | 6h |
| 46 | 1.2.2.2.3 | Diseño del modelo de gestión de usuario y roles | 1d? | 2026-04-15 | 2026-04-16 | 45 | 0d |  | Analista técnico; Técnico Seguridad | 6h |
| 47 | 1.2.2.3 | Diseño de infraestructura | 2d? | 2026-04-16 | 2026-04-20 | 43 | 0d |  | Técnico Seguridad; Arquitecto de software | 32h |
| 48 | 1.2.2.4 | **Diseño de módulos** | 3d? | 2026-04-20 | 2026-04-23 | 47 | 0d |  |  | 50h |
| 49 | 1.2.2.4.1 | **Diseño de seguridad e identidad (IAM)** | 3d? | 2026-04-20 | 2026-04-23 | 46 | 0d |  |  | 14h |
| 50 | 1.2.2.4.1.1 | Selección y configuración del IAM | 1d? | 2026-04-20 | 2026-04-21 | 46 | 0d |  | Arquitecto de software; Técnico Seguridad | 5h |
| 51 | 1.2.2.4.1.2 | Definición de roles | 2d? | 2026-04-21 | 2026-04-23 | 50 | 0d |  | Técnico Seguridad; Analista funcional | 5h |
| 52 | 1.2.2.4.1.3 | Definición del mecanismo JWT de validación de tokens | 1d? | 2026-04-21 | 2026-04-22 | 50 | 1d |  | Arquitecto de software; Técnico Seguridad | 4h |
| 53 | 1.2.2.4.2 | Diseño de la app móvil del inspector | 2d? | 2026-04-20 | 2026-04-22 | 40 | 1d |  | Dev. Senior móvil; Analista técnico; Analista funcional | 20h |

| ID | WBS | Task | Duration | Start | Finish | Predecessors | Total slack | Free slack | Resources | Work |
| --- | --- | --- | --- | --- | --- | --- | --- | --- | --- | --- |
| 54 | 1.2.2.4.3 | **Diseño del dashboard web** | 3d? | 2026-04-20 | 2026-04-23 | 39 | 0d |  |  | 16h |
| 55 | 1.2.2.4.3.1 | Diseño visual y prototipado del dashboard | 1d? | 2026-04-20 | 2026-04-21 | 39 | 0d |  | Dev. Senior fullstack; Analista funcional | 10h |
| 56 | 1.2.2.4.3.2 | Validación del diseño con el contratante | 2d? | 2026-04-21 | 2026-04-23 | 55 | 0d |  | Analista funcional; Coordinador del servicio; Jefe de proyecto | 6h |
| 57 | 1.3 | **Construcción** | 58.03d? | 2026-04-23 | 2026-07-14 | 35 | 0d |  |  | 1312.9h |
| 58 | 1.3.1 | **Configuración de entornos e infraestructura** | 7d? | 2026-04-23 | 2026-05-04 | 47 | 0d |  |  | 88h |
| 59 | 1.3.1.1 | **Configuración y aprovisionamiento de infraestructura** | 5d? | 2026-04-23 | 2026-04-30 | 47 | 0d |  |  | 40h |
| 60 | 1.3.1.1.1 | Estudio de ofertas | 1.25d? | 2026-04-23 | 2026-04-24 |  | 0d |  | Analista técnico | 10h |
| 61 | 1.3.1.1.2 | Adquisición e instalación del hardware | 1.25d? | 2026-04-24 | 2026-04-27 | 60 | 0d |  | Analista técnico | 10h |
| 62 | 1.3.1.1.3 | Configuración del hardware | 2.5d? | 2026-04-27 | 2026-04-30 | 61 | 0d |  | Analista técnico | 20h |
| 63 | 1.3.1.2 | Configuración de entorno de desarrollo | 2d? | 2026-04-30 | 2026-05-04 | 59 | 0d |  | Técnico DevOps | 16h |
| 64 | 1.3.1.3 | Configuración de entorno de pruebas | 2d? | 2026-04-24 | 2026-04-28 | 60 | 3.75d | 0d | Técnico QA | 16h |
| 65 | 1.3.1.4 | Instalación y configuración del IAM | 2d? | 2026-04-24 | 2026-04-28 | 52, 60 | 3.75d |  | Técnico Seguridad | 16h |
| 66 | 1.3.2 | **Desarrollo del sistema** | 50.78d? | 2026-05-04 | 2026-07-13 | 58 | 0d |  |  | 949.9h |
| 67 | 1.3.2.1 | **Desarrollo del backend** | 36.13d? | 2026-05-04 | 2026-06-23 |  | 0d |  |  | 604.2h |
| 68 | 1.3.2.1.1 | Implementación de la API de gestión de inspecciones | 15d? | 2026-05-04 | 2026-05-25 | 65 | 0d |  | Dev. Senior backend; Dev. Junior | 240h |
| 69 | 1.3.2.1.2 | Implementación de la API móvil | 6.25d? | 2026-05-04 | 2026-05-12 |  | 9.73d | 0d | Dev. Senior móvil; Dev. Senior fullstack | 100h |
| 70 | 1.3.2.1.3 | Implementación del módulo de gestión de adjuntos | 1.91d? | 2026-05-25 | 2026-06-04 | 68 | 0d |  | Dev. Senior backend; Dev. Junior | 75.3h |
| 71 | 1.3.2.1.4 | Implementación del módulo de auditoría y trazabilidad | 1d? | 2026-06-04 | 2026-06-16 | 70 | 0d |  | Dev. Senior backend; Dev. Junior | 118.9h |
| 72 | 1.3.2.1.5 | **Implementación de la gestión de usuarios y roles** | 5.29d? | 2026-06-16 | 2026-06-23 | 68 | 0d |  |  | 70h |
| 73 | 1.3.2.1.5.1 | Implementación de autenticacion JWT con IAM | 1.47d? | 2026-06-16 | 2026-06-17 | 71 | 0d |  | Dev. Senior backend; Técnico Seguridad | 18h |
| 74 | 1.3.2.1.5.2 | Implementación de control de permisos por rol y ámbito | 1.61d? | 2026-06-17 | 2026-06-19 | 73 | 0d |  | Dev. Senior backend; Técnico Seguridad | 20h |
| 75 | 1.3.2.1.5.3 | Implementación de administración de usuarios y delegación al IAM | 2.22d? | 2026-06-19 | 2026-06-23 | 74 | 0d |  | Dev. Junior; Dev. Senior backend | 32h |
| 76 | 1.3.2.2 | Desarrollo del dashboard | 21.71d? | 2026-05-12 | 2026-06-11 | 69 | 9.73d | 0d | Dev. Senior fullstack | 173.7h |
| 77 | 1.3.2.3 | **Desarrollo de la app móvil del inspector** | 2d? | 2026-05-12 | 2026-05-14 | 53, 60 | 28.82d | 0d |  | 16h |
| 78 | 1.3.2.3.1 | Implementación adaptada a iOS | 1d? | 2026-05-12 | 2026-05-13 | 69 | 28.82d | 0d | Dev. Senior móvil | 8h |
| 79 | 1.3.2.3.2 | Implemetación adaptada a Android | 1d? | 2026-05-13 | 2026-05-14 | 78 | 28.82d |  | Dev. Senior móvil | 8h |

| ID | WBS | Task | Duration | Start | Finish | Predecessors | Total slack | Free slack | Resources | Work |
| --- | --- | --- | --- | --- | --- | --- | --- | --- | --- | --- |
| 80 | 1.3.2.4 | **Integración con aplicaciones existentes** | 14.64d? | 2026-06-23 | 2026-07-13 | 75 | 68.57d |  |  | 156h |
| 81 | 1.3.2.4.1 | Análisis de lógica acoplada a sustituir en la solución actual | 4.55d? | 2026-06-23 | 2026-07-02 | 58 | 68.57d | 0d | Dev. Senior backend; Analista técnico | 40h |
| 82 | 1.3.2.4.2 | **Sustitución de lógica acoplada para que funcione con la nueva API** | 14.64d? | 2026-06-23 | 2026-07-13 | 78 | 68.57d |  |  | 116h |
| 83 | 1.3.2.4.2.1 | Adaptación aplicación web existente | 7.25d? | 2026-07-02 | 2026-07-13 | 81 | 68.57d |  | Dev. Senior backend; Dev. Junior | 100h |
| 84 | 1.3.2.4.2.2 | Adaptación aplicación móvil existente | 2d? | 2026-06-23 | 2026-06-29 | 78 | 79.22d |  | Dev. Senior móvil | 16h |
| 85 | 1.3.3 | **Pruebas y validación** | 54.78d? | 2026-04-28 | 2026-07-14 | 64 | 0d |  |  | 275h |
| 86 | 1.3.3.1 | **Plan de pruebas** | 2d? | 2026-04-28 | 2026-04-30 | 27 | 52.78d |  |  | 24h |
| 87 | 1.3.3.1.1 | Elaboración del plan de pruebas | 1d? | 2026-04-28 | 2026-04-29 | 27 | 52.78d | 0d | Técnico QA | 8h |
| 88 | 1.3.3.1.2 | Diseño de casos de prueba de cada módulo | 1d? | 2026-04-29 | 2026-04-30 | 87 | 52.78d |  | Técnico QA; Analista funcional | 16h |
| 89 | 1.3.3.2 | **Pruebas unitarias** | 30.7d? | 2026-05-14 | 2026-06-26 |  | 0d |  |  | 91h |
| 90 | 1.3.3.2.1 | Elaboración de pruebas unitarias del backend | 1.79d? | 2026-06-23 | 2026-06-26 | 67 | 0d |  | Técnico QA; Dev. Junior; Dev. Senior backend | 41h |
| 91 | 1.3.3.2.2 | Elaboración de pruebas unitarias del dashboard | 1.25d? | 2026-06-11 | 2026-06-12 | 76 | 9.73d |  | Técnico QA; Dev. Senior fullstack | 20h |
| 92 | 1.3.3.2.3 | Elaboración de pruebas unitarias de la app móvil | 1.88d? | 2026-05-14 | 2026-05-18 | 77 | 28.82d |  | Técnico QA; Dev. Senior móvil | 30h |
| 93 | 1.3.3.3 | **Pruebas de integración** | 5.58d? | 2026-06-26 | 2026-07-03 |  | 0d |  |  | 75.67h |
| 94 | 1.3.3.3.1 | Elaboración de pruebas de integración API Backend - Dashboard | 1.53d? | 2026-06-26 | 2026-06-29 | 67, 76, 89, 90, 91 | 0d |  | Técnico QA; Dev. Senior backend; Dev. Senior móvil | 23h |
| 95 | 1.3.3.3.2 | Elaboración de pruebas de integración API Backend - App móvil | 1d? | 2026-06-29 | 2026-06-30 | 94 | 0d |  | Técnico QA; Dev. Senior móvil; Dev. Senior backend | 22h |
| 96 | 1.3.3.3.3 | Pruebas de integración con IAM | 1.5d? | 2026-06-30 | 2026-07-02 | 62, 69, 95 | 0d |  | Técnico QA; Técnico Seguridad | 24h |
| 97 | 1.3.3.3.4 | Pruebas de integración app web existente - nueva API | 1.55d? | 2026-07-02 | 2026-07-03 | 96 | 0d |  | Técnico QA; Dev. Senior backend | 6.67h |
| 98 | 1.3.3.4 | **Pruebas de sistema** | 4.5d? | 2026-07-06 | 2026-07-13 |  | 0d |  |  | 63h |
| 99 | 1.3.3.4.1 | Pruebas funcionales de flujos principales | 1d? | 2026-07-06 | 2026-07-07 | 104 | 0d |  | Técnico QA | 9h |
| 100 | 1.3.3.4.2 | Pruebas de rendimiento | 1d? | 2026-07-07 | 2026-07-08 | 99 | 0d |  | Técnico QA; Técnico DevOps | 14h |
| 101 | 1.3.3.4.3 | Pruebas de seguridad | 1.5d? | 2026-07-08 | 2026-07-10 | 100 | 0d |  | Técnico Seguridad; Técnico QA | 24h |
| 102 | 1.3.3.4.4 | Pruebas de compatibilidad | 1d? | 2026-07-10 | 2026-07-13 | 101 | 0d |  | Técnico QA; Dev. Senior móvil | 16h |
| 103 | 1.3.3.5 | Pruebas de aceptacion usuario | 1d | 2026-07-13 | 2026-07-14 | 98 | 0d |  | Técnico QA | 8h |
| 104 | 1.3.3.6 | Pruebas de carga | 1d? | 2026-07-03 | 2026-07-06 | 93 | 0d |  | Técnico QA; Técnico DevOps | 13.33h |

| ID | WBS | Task | Duration | Start | Finish | Predecessors | Total slack | Free slack | Constraint | Resources | Work |
| --- | --- | --- | --- | --- | --- | --- | --- | --- | --- | --- | --- |
| 105 | 1.4 | **Implantación** | 43.04d? | 2026-07-14 | 2026-09-11 | 85 | 0d |  |  |  | 132h |
| 106 | 1.4.1 | Elaboración de plan de implantación | 1d? | 2026-07-14 | 2026-07-15 |  | 0d |  |  | Coordinador del servicio; Jefe de proyecto; Técnico DevOps | 24h |
| 107 | 1.4.2 | Configuración del entorno de producción | 1d | 2026-07-15 | 2026-07-16 | 106 | 0d |  |  |  |  |
| 108 | 1.4.3 | Configuración de copias de seguridad y RAID de respaldo | 3.5d? | 2026-07-16 | 2026-09-03 | 107 | 0d |  | start no earlier than 2026-05-19 | Técnico DevOps | 28h |
| 109 | 1.4.4 | Migración y carga inicial de datos | 1.87d? | 2026-09-03 | 2026-09-08 | 108 | 0d |  |  | Técnico DevOps; Analista técnico; Dev. Senior backend | 40h |
| 110 | 1.4.5 | Verificación y pruebas en producción | 2d? | 2026-09-08 | 2026-09-11 | 109 | 0d |  |  | Técnico DevOps; Técnico QA | 24h |
| 111 | 1.4.6 | Ejecución de plan de formación | 1d? | 2026-07-15 | 2026-07-16 | 106 | 66.32d |  |  | Jefe de proyecto; Formador | 16h |
| 112 | 1.5 | **Documentación** | 73.32d? | 2026-06-17 | 2026-09-28 |  | 13.72d |  |  |  | 132h |
| 113 | 1.5.1 | **Documentación técnica del sistema** | 63.09d? | 2026-06-17 | 2026-09-14 | 73 | 23.95d |  |  |  | 60h |
| 114 | 1.5.1.1 | Documentación técnica del backend | 0.5d? | 2026-06-25 | 2026-06-29 | 67 | 79.37d |  |  | Dev. Senior backend; Dev. Senior fullstack | 8h |
| 115 | 1.5.1.2 | Documentación técnica de la app móvil del inspector | 2d? | 2026-06-17 | 2026-06-19 | 77 | 85.04d |  |  | Dev. Senior móvil | 16h |
| 116 | 1.5.1.3 | Documentación técnica del dashboard | 1.5d? | 2026-06-17 | 2026-06-19 | 76 | 85.54d |  |  | Dev. Senior fullstack | 12h |
| 117 | 1.5.1.4 | Documentación de la arquitectura de despliegue | 1d? | 2026-06-17 | 2026-06-18 | 36 | 71.82d | 0d |  | Arquitecto de software | 8h |
| 118 | 1.5.1.5 | Documentación de terceros | 1d? | 2026-06-17 | 2026-06-18 | 73 | 72.32d |  |  | Analista técnico | 8h |
| 119 | 1.5.1.6 | Documentación del plan de mantenimiento del entorno | 1d? | 2026-09-11 | 2026-09-14 | 110 | 0d |  |  | Técnico DevOps | 8h |
| 120 | 1.5.2 | Elaboración del manual de usuario | 1d | 2026-07-14 | 2026-07-15 | 85 | 54.36d | 53.61d |  | Analista funcional | 8h |
| 121 | 1.5.3 | Elaboración del manual de instalación y operación | 1d | 2026-09-16 | 2026-09-18 | 119 | 0d |  |  | Técnico DevOps | 8h |
| 122 | 1.5.4 | Elaboración del manual de implantación y explotación | 2d? | 2026-09-18 | 2026-09-28 | 121 | 0d |  |  | Técnico DevOps; Jefe de proyecto | 24h |
| 123 | 1.5.5 | Elaboración de sesiones de formación | 1.5d? | 2026-06-18 | 2026-06-22 | 117 | 71.82d |  |  | Analista funcional; Formador | 24h |
| 124 | 1.5.6 | Elaboración del documento de resultados de la formación | 1d? | 2026-09-08 | 2026-09-09 | 109 | 27.35d |  |  | Formador | 8h |
| 125 | 1.6 | **Cierre del proyecto** | 13.72d? | 2026-09-28 | 2026-10-16 | 122 | 0d |  |  |  | 68h |
| 126 | 1.6.1 | **Entrega final de entregables** | 1d? | 2026-09-28 | 2026-09-29 | 110, 117, 118, 119 | 0d |  |  |  | 30h |
| 127 | 1.6.1.1 | Entrega de código fuente | 1d? | 2026-09-28 | 2026-09-29 | 108 | 0d |  |  | Dev. Senior backend; Dev. Senior fullstack; Dev. Senior móvil | 24h |
| 128 | 1.6.1.2 | Documentación del proyecto catalogada y versionada | 0.5d? | 2026-09-28 | 2026-09-29 | 110 | 0.5d |  |  | Consultor de tecnología | 4h |
| 129 | 1.6.1.3 | Entrega del material de formación | 0.25d? | 2026-09-28 | 2026-09-29 | 120 | 0.75d |  |  | Formador | 2h |

| ID | WBS | Task | Duration | Start | Finish | Predecessors | Total slack | Free slack | Constraint | Resources | Work |
| --- | --- | --- | --- | --- | --- | --- | --- | --- | --- | --- | --- |
| 130 | 1.6.2 | **Acuerdo de mantenimiento y garantía** | 12.72d? | 2026-09-29 | 2026-10-16 | 123 | 0d |  |  |  | 38h |
| 131 | 1.6.2.1 | Acta de aceptación y cierre formal del proyecto | 2d? | 2026-09-29 | 2026-10-07 | 126 | 0d |  |  | Jefe de proyecto; Coordinador del servicio | 16h |
| 132 | 1.6.2.2 | Verificación de entregables por el contratante | 2d? | 2026-10-07 | 2026-10-15 | 131 | 0d |  |  | Coordinador del servicio; Jefe de proyecto | 16h |
| 133 | 1.6.2.3 | Emisión y firma del Acta de Aceptación del proyecto por el contratante | 0.25d? | 2026-10-15 | 2026-10-15 | 132 | 0d |  |  | Jefe de proyecto | 2h |
| 134 | 1.6.2.4 | Reunión de cierre | 1d? | 2026-10-15 | 2026-10-16 | 133 | 0d |  |  | Jefe de proyecto; Coordinador del servicio | 4h |
| 135 | 1.7 | Gestión continua del proyecto | 1d | 2026-03-09 | 2026-03-09 |  | 158.55d |  |  |  |  |
| 136 | 1.8 | **Reuniones quincenales del Comité de Seguimiento** | 140.19d | 2026-03-16 | 2026-09-28 |  | 14.11d |  |  |  | 44h |
| 137 | 1.8.1 | Reuniones quincenales del Comité de Seguimiento 1 | 0.12d | 2026-03-16 | 2026-03-16 |  | 154.17d | 0d | start no earlier than 2026-03-16 | Coordinador del servicio; Jefe de proyecto | 2h |
| 138 | 1.8.2 | Reuniones quincenales del Comité de Seguimiento 2 | 0.19d | 2026-03-30 | 2026-03-30 |  | 144.11d | 0d | start no earlier than 2026-03-30 | Coordinador del servicio; Jefe de proyecto | 3h |
| 139 | 1.8.3 | Reuniones quincenales del Comité de Seguimiento 3 | 0.19d | 2026-04-13 | 2026-04-13 |  | 134.11d | 0d | start no earlier than 2026-04-13 | Coordinador del servicio; Jefe de proyecto | 3h |
| 140 | 1.8.4 | Reuniones quincenales del Comité de Seguimiento 4 | 0.19d | 2026-04-27 | 2026-04-27 |  | 124.11d | 0d | start no earlier than 2026-04-27 | Coordinador del servicio; Jefe de proyecto | 3h |
| 141 | 1.8.5 | Reuniones quincenales del Comité de Seguimiento 5 | 0.19d | 2026-05-11 | 2026-05-11 |  | 114.11d | 0d | start no earlier than 2026-05-11 | Coordinador del servicio; Jefe de proyecto | 3h |
| 142 | 1.8.6 | Reuniones quincenales del Comité de Seguimiento 6 | 0.19d | 2026-05-25 | 2026-05-25 |  | 104.11d | 0d | start no earlier than 2026-05-25 | Coordinador del servicio; Jefe de proyecto | 3h |
| 143 | 1.8.7 | Reuniones quincenales del Comité de Seguimiento 7 | 0.19d | 2026-06-08 | 2026-06-08 |  | 94.11d | 0d | start no earlier than 2026-06-08 | Coordinador del servicio; Jefe de proyecto | 3h |
| 144 | 1.8.8 | Reuniones quincenales del Comité de Seguimiento 8 | 0.19d | 2026-06-22 | 2026-06-22 |  | 84.11d | 0d | start no earlier than 2026-06-22 | Coordinador del servicio; Jefe de proyecto | 3h |
| 145 | 1.8.9 | Reuniones quincenales del Comité de Seguimiento 9 | 0.19d | 2026-07-06 | 2026-07-06 |  | 74.11d | 0d | start no earlier than 2026-07-06 | Coordinador del servicio; Jefe de proyecto | 3h |
| 146 | 1.8.10 | Reuniones quincenales del Comité de Seguimiento 10 | 0.19d | 2026-07-20 | 2026-07-20 |  | 64.11d | 0d | start no earlier than 2026-07-20 | Coordinador del servicio; Jefe de proyecto | 3h |
| 147 | 1.8.11 | Reuniones quincenales del Comité de Seguimiento 11 | 0.19d | 2026-08-03 | 2026-08-03 |  | 54.11d | 0d | start no earlier than 2026-08-03 | Coordinador del servicio; Jefe de proyecto | 3h |
| 148 | 1.8.12 | Reuniones quincenales del Comité de Seguimiento 12 | 0.19d | 2026-08-17 | 2026-08-17 |  | 44.11d | 0d | start no earlier than 2026-08-17 | Coordinador del servicio; Jefe de proyecto | 3h |
| 149 | 1.8.13 | Reuniones quincenales del Comité de Seguimiento 13 | 0.19d | 2026-08-31 | 2026-08-31 |  | 34.11d | 0d | start no earlier than 2026-08-31 | Coordinador del servicio; Jefe de proyecto | 3h |
| 150 | 1.8.14 | Reuniones quincenales del Comité de Seguimiento 14 | 0.19d | 2026-09-14 | 2026-09-14 |  | 24.11d | 0d | start no earlier than 2026-09-14 | Coordinador del servicio; Jefe de proyecto | 3h |
| 151 | 1.8.15 | Reuniones quincenales del Comité de Seguimiento 15 | 0.19d | 2026-09-28 | 2026-09-28 |  | 14.11d | 0d | start no earlier than 2026-09-28 | Coordinador del servicio; Jefe de proyecto | 3h |
| 152 | 1.9 | **Informes de seguimiento periódicos** | 140.31d | 2026-03-16 | 2026-09-28 |  | 14.11d |  |  |  | 30h |
| 153 | 1.9.1 | Informes de seguimiento periódicos 1 | 0.25d | 2026-03-16 | 2026-03-16 | 137 | 154.17d |  | start no earlier than 2026-03-16 | Jefe de proyecto | 2h |
| 154 | 1.9.2 | Informes de seguimiento periódicos 2 | 0.25d | 2026-03-30 | 2026-03-30 | 138 | 144.11d |  | start no earlier than 2026-03-30 | Jefe de proyecto | 2h |
| 155 | 1.9.3 | Informes de seguimiento periódicos 3 | 0.25d | 2026-04-13 | 2026-04-13 | 139 | 134.11d |  | start no earlier than 2026-04-13 | Jefe de proyecto | 2h |
| 156 | 1.9.4 | Informes de seguimiento periódicos 4 | 0.25d | 2026-04-27 | 2026-04-27 | 140 | 124.11d |  | start no earlier than 2026-04-27 | Jefe de proyecto | 2h |
| 157 | 1.9.5 | Informes de seguimiento periódicos 5 | 0.25d | 2026-05-11 | 2026-05-11 | 141 | 114.11d |  | start no earlier than 2026-05-11 | Jefe de proyecto | 2h |
| 158 | 1.9.6 | Informes de seguimiento periódicos 6 | 0.25d | 2026-05-25 | 2026-05-25 | 142 | 104.11d |  | start no earlier than 2026-05-25 | Jefe de proyecto | 2h |
| 159 | 1.9.7 | Informes de seguimiento periódicos 7 | 0.25d | 2026-06-08 | 2026-06-08 | 143 | 94.11d |  | start no earlier than 2026-06-08 | Jefe de proyecto | 2h |
| 160 | 1.9.8 | Informes de seguimiento periódicos 8 | 0.25d | 2026-06-22 | 2026-06-22 | 144 | 84.11d |  | start no earlier than 2026-06-22 | Jefe de proyecto | 2h |
| 161 | 1.9.9 | Informes de seguimiento periódicos 9 | 0.25d | 2026-07-06 | 2026-07-06 | 145 | 74.11d |  | start no earlier than 2026-07-06 | Jefe de proyecto | 2h |
| 162 | 1.9.10 | Informes de seguimiento periódicos 10 | 0.25d | 2026-07-20 | 2026-07-20 | 146 | 64.11d |  | start no earlier than 2026-07-20 | Jefe de proyecto | 2h |
| 163 | 1.9.11 | Informes de seguimiento periódicos 11 | 0.25d | 2026-08-03 | 2026-08-03 | 147 | 54.11d |  | start no earlier than 2026-08-03 | Jefe de proyecto | 2h |
| 164 | 1.9.12 | Informes de seguimiento periódicos 12 | 0.25d | 2026-08-17 | 2026-08-17 | 148 | 44.11d |  | start no earlier than 2026-08-17 | Jefe de proyecto | 2h |
| 165 | 1.9.13 | Informes de seguimiento periódicos 13 | 0.25d | 2026-08-31 | 2026-08-31 | 149 | 34.11d |  | start no earlier than 2026-08-31 | Jefe de proyecto | 2h |
| 166 | 1.9.14 | Informes de seguimiento periódicos 14 | 0.25d | 2026-09-14 | 2026-09-14 | 150 | 24.11d |  | start no earlier than 2026-09-14 | Jefe de proyecto | 2h |
| 167 | 1.9.15 | Informes de seguimiento periódicos 15 | 0.25d | 2026-09-28 | 2026-09-28 | 151 | 14.11d |  | start no earlier than 2026-09-28 | Jefe de proyecto | 2h |
